# 调研阶段

Schedule from a web Gantt chart, 2025-08-11 to 2025-08-11.
Every day is a working day

## Schedule

| ID | WBS | Task | Duration | Start | Finish |
| --- | --- | --- | --- | --- | --- |
| 2 | 1 | 调研工作启动会 | 1d | 2025-08-11 | 2025-08-11 |
